# Cronograma de Actividades SAJU

Schedule from MS Project, 2017-03-09 to 2018-01-01, A marks actual dates.
S.A.T.

## Calendars

- Estándar: Mon-Fri 09:00-13:00, 15:00-19:00; Sat-Sun off. Exceptions (off unless hours are given): 2017-04-13 to 2017-04-14 (semana santa), 2017-05-01 (dia del trabajo), 2017-06-29 (feriado), 2017-07-28 (fiestas patrias), 2017-08-30 (santa rosa), 2017-11-01 (feriado), 2017-12-08 (feriado), 2017-12-25 (navidad).

## Resources

| Resource |
| --- |
| Marjorie Gil |
| Wilson R |
| América B |
| Luis Leiva |
| Fernando B |
| César A |
| AF Calidad |
| Usuario |
| Edgar Marquez |
| Modelador de Datos |
| Ronald Raico |
| Celis |
| Proveedor |
| logistica |

## Schedule

| ID | WBS | Task | Duration | Start | Finish | Predecessors | Complete | Remaining | Total slack | Free slack | Constraint | Work | Actual work |
| --- | --- | --- | --- | --- | --- | --- | --- | --- | --- | --- | --- | --- | --- |
| 1 | 1 | **Ejecución de la AE Digitalización de Expedientes Coactivos** | 204d? | 2017-03-09 A | 2018-01-01 |  | 48% | 106.59d? | 0d |  |  | 2465.6h | 833.6h |
| 2 | 1.1 | **1. ACTIVIDADES DE GESTIÓN** | 204d? | 2017-03-09 A | 2018-01-01 |  | 24% | 155.04d? | 0d |  |  |  |  |
| 3 | 1.1.1 | **1.1 Planificación** | 12d | 2017-05-22 A | 2017-06-06 A |  | 100% |  |  |  |  |  |  |
| 4 | 1.1.1.1 | **1.1.1 Gestión del Alcance** | 12d | 2017-05-22 A | 2017-06-06 A |  | 100% |  |  |  |  |  |  |
| 5 | 1.1.1.1.1 | Elaboración del documento | 3d | 2017-05-22 A | 2017-05-24 A |  | 100% |  |  |  | start no earlier than 2017-05-22 |  |  |
| 6 | 1.1.1.1.2 | Revisión del documento | 1d | 2017-05-25 A | 2017-05-25 A | 5 | 100% |  |  |  | start no earlier than 2017-05-25 |  |  |
| 7 | 1.1.1.1.3 | Levantamiento de observaciones | 1d | 2017-05-26 A | 2017-05-26 A | 6 | 100% |  |  |  | start no earlier than 2017-05-26 |  |  |
| 8 | 1.1.1.1.4 | Validación Final | 5d | 2017-05-29 A | 2017-06-02 A | 7 | 100% |  |  |  | start no earlier than 2017-05-29 |  |  |
| 9 | 1.1.1.1.5 | Aprobación del documento | 2d | 2017-06-05 A | 2017-06-06 A | 8 | 100% |  |  |  | finish no earlier than 2017-06-06 |  |  |
| 10 | 1.1.2 | **1.2 Ejecución** | 159d? | 2017-03-09 A | 2017-10-25 |  | 9% | 144.28d? | 45d |  |  |  |  |
| 11 | 1.1.2.1 | **1.2.1 Gestión de las adquisiciones** | 159d? | 2017-03-09 A | 2017-10-25 |  | 9% | 144.28d? | 45d |  |  |  |  |
| 12 | 1.1.2.1.1 | **1.2.1.1 Servicio de Terceros** | 159d? | 2017-03-09 A | 2017-10-25 |  | 9% | 144.28d? | 45d |  |  |  |  |
| 13 | 1.1.2.1.1.1 | **1.2.1.1.1 Contratación** | 159d | 2017-03-09 | 2017-10-25 |  |  |  | 45d |  |  |  |  |
| 14 | 1.1.2.1.1.1.1 | **Persona Natural** | 1d | 2017-03-09 | 2017-03-09 |  |  |  | 203d |  |  |  |  |
| 15 | 1.1.2.1.1.1.1.1 | Luis Leiva (Procesos) | 1d | 2017-03-09 | 2017-03-09 |  |  |  | 203d |  |  |  |  |
| 16 | 1.1.2.1.1.1.1.2 | Luis Leiva (Sistemas) | 1d | 2017-03-09 | 2017-03-09 |  |  |  | 203d |  |  |  |  |
| 17 | 1.1.2.1.1.1.1.3 | Luis Leiva (Sistemas) | 1d | 2017-03-09 | 2017-03-09 |  |  |  | 203d |  |  |  |  |
| 18 | 1.1.2.1.1.1.1.4 | Fernando Bustamante (Programador) | 1d | 2017-03-09 | 2017-03-09 |  |  |  | 203d |  |  |  |  |
| 19 | 1.1.2.1.1.1.1.5 | Fernando Bustamante (Programador) | 1d | 2017-03-09 | 2017-03-09 |  |  |  | 203d |  |  |  |  |
| 20 | 1.1.2.1.1.1.1.6 | César Atalaya (Programador) | 1d | 2017-03-09 | 2017-03-09 |  |  |  | 203d |  |  |  |  |
| 21 | 1.1.2.1.1.1.1.7 | César Atalaya (Programador) | 1d | 2017-03-09 | 2017-03-09 |  |  |  | 203d |  |  |  |  |
| 22 | 1.1.2.1.1.1.2 | **Persona Jurídica** | 27d | 2017-09-19 | 2017-10-25 |  |  |  | 45d |  |  |  |  |
| 23 | 1.1.2.1.1.1.2.1 | Elaboración de TDR | 9d | 2017-09-19 | 2017-09-29 |  |  |  | 51d | 0d | start no earlier than 2017-09-19 |  |  |
| 24 | 1.1.2.1.1.1.2.2 | Elaboración y Firma de Bases | 2d | 2017-10-02 | 2017-10-03 | 23 |  |  | 51d | 0d |  |  |  |
| 25 | 1.1.2.1.1.1.2.3 | Publicación de convocatoria | 1d | 2017-10-04 | 2017-10-04 | 24 |  |  | 51d | 0d |  |  |  |
| 26 | 1.1.2.1.1.1.2.4 | Registro de participantes | 9d | 2017-10-05 | 2017-10-17 | 25 |  |  | 51d |  |  |  |  |
| 27 | 1.1.2.1.1.1.2.5 | Consultas y observaciones | 2d | 2017-10-10 | 2017-10-11 |  |  |  | 45d | 0d | start no earlier than 2017-10-10 |  |  |
| 28 | 1.1.2.1.1.1.2.6 | Absolución de consultas y observaciones | 1d | 2017-10-12 | 2017-10-12 | 27 |  |  | 45d | 0d |  |  |  |
| 29 | 1.1.2.1.1.1.2.7 | Integración de Bases | 1d | 2017-10-13 | 2017-10-13 | 28 |  |  | 45d | 0d |  |  |  |
| 30 | 1.1.2.1.1.1.2.8 | Presentación de ofertas | 1d | 2017-10-16 | 2017-10-16 | 29 |  |  | 45d | 0d |  |  |  |
| 31 | 1.1.2.1.1.1.2.9 | Evaluación y calificación | 1d | 2017-10-17 | 2017-10-17 | 30 |  |  | 45d | 0d |  |  |  |
| 32 | 1.1.2.1.1.1.2.10 | Otorgamiento de la nueva Pro | 1d | 2017-10-18 | 2017-10-18 | 31 |  |  | 45d | 0d |  |  |  |
| 33 | 1.1.2.1.1.1.2.11 | Firma de Contrato | 5d | 2017-10-19 | 2017-10-25 | 32 |  |  | 45d |  |  |  |  |

| ID | WBS | Task | Type | Duration | Start | Finish | Predecessors | Complete | Remaining | Total slack | Constraint |
| --- | --- | --- | --- | --- | --- | --- | --- | --- | --- | --- | --- |
| 34 | 1.1.2.1.1.2 | **1.2.1.1.2 Inducción** |  | 2d | 2017-03-09 A | 2017-03-10 A |  | 100% |  |  |  |
| 35 | 1.1.2.1.1.2.1 | Presentación de equipos |  | 1d | 2017-03-09 A | 2017-03-09 A |  | 100% |  |  |  |
| 36 | 1.1.2.1.1.2.2 | Capacitación en Procesos |  | 1d | 2017-03-10 A | 2017-03-10 A | 35 | 100% |  |  |  |
| 37 | 1.1.2.1.1.2.3 | Capacitación en la nueva arquitectura |  | 1d | 2017-03-09 A | 2017-03-09 A |  | 100% |  |  |  |
| 38 | 1.1.2.1.1.2.4 | Pasantía con el área usuaria |  | 2d | 2017-03-09 A | 2017-03-10 A |  | 100% |  |  |  |
| 39 | 1.1.2.1.1.3 | **1.2.1.1.3 Informes** |  | 1d? | 2017-03-09 | 2017-03-09 |  |  |  | 0d |  |
| 40 | 1.1.2.1.1.3.1 | **A. Persona Natural** |  | 1d? | 2017-03-09 | 2017-03-09 |  |  |  | 0d |  |
| 41 | 1.1.2.1.1.3.1.1 | Informe de Pago - Luis Leiva (procesos) | manual | 1d? | 2017-03-09 | 2017-03-09 |  |  |  |  |  |
| 42 | 1.1.2.1.1.3.1.2 | Informe de Pago - Luis Leiva (sistemas) | manual | 1d? | 2017-03-09 | 2017-03-09 |  |  |  |  |  |
| 43 | 1.1.2.1.1.3.1.3 | Informe de Pago - Luis Leiva (sistemas) | manual | 1d? | 2017-03-09 | 2017-03-09 |  |  |  |  |  |
| 44 | 1.1.2.1.1.3.1.4 | Informe de Pago - Fernando (programador) | manual | 1d? | 2017-03-09 | 2017-03-09 |  |  |  |  |  |
| 45 | 1.1.2.1.1.3.1.5 | Informe de Pago - Fernando (programador) | manual | 1d? | 2017-03-09 | 2017-03-09 |  |  |  |  |  |
| 46 | 1.1.2.1.1.3.1.6 | Informe de Pago - César (programador) | manual | 1d? | 2017-03-09 | 2017-03-09 |  |  |  |  |  |
| 47 | 1.1.2.1.1.3.1.7 | Informe de Pago - César (programador) | manual | 1d? | 2017-03-09 | 2017-03-09 |  |  |  |  |  |
| 48 | 1.1.2.1.1.3.2 | **B. Persona Jurídica** |  | 1d? | 2017-03-09 | 2017-03-09 |  |  |  | 0d |  |
| 49 | 1.1.2.1.1.3.2.1 | Entregable 1 | manual | 1d? | 2017-03-09 | 2017-03-09 |  |  |  |  |  |
| 50 | 1.1.2.1.1.3.2.2 | Entregable 2 | manual | 1d? | 2017-03-09 | 2017-03-09 |  |  |  |  |  |
| 51 | 1.1.3 | **1.3 Seguimiento y Control** |  | 204d? | 2017-03-09 A | 2018-01-01 |  | 13% | 178.5d? | 0d |  |
| 52 | 1.1.3.1 | **1.3.1 Informe Mensual** |  | 127d | 2017-06-30 A | 2018-01-01 |  | 14% | 108.86d | 0d |  |
| 53 | 1.1.3.1.1 | Informe Mensual 1 |  | 1d | 2017-06-30 | 2017-06-30 |  |  |  | 126d | start no earlier than 2017-06-30 |
| 54 | 1.1.3.1.2 | Informe Mensual 2 |  | 1d | 2017-07-31 A | 2017-07-31 A |  | 100% |  |  | start no earlier than 2017-07-30 |
| 55 | 1.1.3.1.3 | Informe Mensual 3 |  | 1d | 2017-08-31 | 2017-08-31 |  |  |  | 84d | start no earlier than 2017-08-30 |
| 56 | 1.1.3.1.4 | Informe Mensual 4 |  | 1d | 2017-10-02 | 2017-10-02 |  |  |  | 62d | start no earlier than 2017-09-30 |
| 57 | 1.1.3.1.5 | Informe Mensual 5 |  | 1d | 2017-10-30 | 2017-10-30 |  |  |  | 42d | start no earlier than 2017-10-30 |
| 58 | 1.1.3.1.6 | Informe Mensual 6 |  | 1d | 2017-11-30 | 2017-11-30 |  |  |  | 20d | start no earlier than 2017-11-30 |
| 59 | 1.1.3.1.7 | Informe Mensual 7 |  | 1d | 2018-01-01 | 2018-01-01 |  |  |  | 0d | start no earlier than 2017-12-30 |
| 60 | 1.1.3.2 | 1.3.2 Reuniones de Seguimiento |  | 1d? | 2017-03-09 | 2017-03-09 |  |  |  | 203d |  |

| ID | WBS | Task | Type | Duration | Start | Finish | Predecessors | Complete | Remaining | Total slack | Free slack | Constraint | Work | Actual work |
| --- | --- | --- | --- | --- | --- | --- | --- | --- | --- | --- | --- | --- | --- | --- |
| 61 | 1.1.4 | **1.4 Cierre** |  | 1d | 2017-03-09 | 2017-03-09 |  |  |  | 0d |  |  |  |  |
| 62 | 1.1.4.1 | 1.4.1 Informe de Cierre | manual | 1d | 2017-03-09 | 2017-03-09 |  |  |  |  |  |  |  |  |
| 63 | 1.2 | **2. ACTIVIDADES DE INGENIERÍA** |  | 203d | 2017-03-09 A | 2017-12-29 |  | 51% | 98.71d | 1d |  |  | 2465.6h | 833.6h |
| 64 | 1.2.1 | **2.1 Planificación** |  | 58d | 2017-03-09 A | 2017-06-01 A |  | 100% |  |  |  |  |  |  |
| 65 | 1.2.1.1 | **2.1.1 Relevamiento de Información** |  | 58d | 2017-03-09 A | 2017-06-01 A |  | 100% |  |  |  |  |  |  |
| 66 | 1.2.1.1.1 | Reuniones con los involucrados |  | 23d | 2017-03-09 A | 2017-04-10 A |  | 100% |  |  |  |  |  |  |
| 67 | 1.2.1.1.2 | Elaboración del AS IS |  | 25d | 2017-03-09 A | 2017-04-12 A |  | 100% |  |  |  |  |  |  |
| 68 | 1.2.1.1.3 | Revisión (Usuario - GOP - GPY - GIN) |  | 10d | 2017-04-17 A | 2017-04-28 A | 67 | 100% |  |  |  |  |  |  |
| 69 | 1.2.1.1.4 | Levantamiento de observaciones |  | 11d | 2017-05-02 A | 2017-05-16 A | 68 | 100% |  |  |  |  |  |  |
| 70 | 1.2.1.1.5 | Validación Final del AS IS |  | 10d | 2017-05-17 A | 2017-05-30 A | 69 | 100% |  |  |  |  |  |  |
| 71 | 1.2.1.1.6 | Aprobación del Relevamiento de Información |  | 2d | 2017-05-31 A | 2017-06-01 A | 70 | 100% |  |  |  |  |  |  |
| 72 | 1.2.2 | **2.2 Modelado de Procesos** |  | 105d | 2017-04-11 A | 2017-09-12 |  | 70% | 31.5d | 76d |  |  |  |  |
| 73 | 1.2.2.1 | **2.2.1 Ficha Técnica del Proceso** |  | 35d | 2017-04-11 A | 2017-06-01 A |  | 100% |  |  |  |  |  |  |
| 74 | 1.2.2.1.1 | Elaboración del TO BE |  | 9d | 2017-04-11 A | 2017-04-25 A |  | 100% |  |  |  | start no earlier than 2017-04-11 |  |  |
| 75 | 1.2.2.1.2 | Revisión (Usuario - GOP - GPY - GIN) |  | 7d | 2017-04-26 A | 2017-05-05 A | 74 | 100% |  |  |  |  |  |  |
| 76 | 1.2.2.1.3 | Levantamiento de observaciones |  | 4d | 2017-05-08 A | 2017-05-11 A | 75 | 100% |  |  |  |  |  |  |
| 77 | 1.2.2.1.4 | Validación Final del TO BE |  | 2d | 2017-05-12 A | 2017-05-15 A | 76 | 100% |  |  |  |  |  |  |
| 78 | 1.2.2.1.5 | Ficha Técnica del Proceso |  | 5d | 2017-05-16 A | 2017-05-22 A | 77 | 100% |  |  |  |  |  |  |
| 79 | 1.2.2.1.6 | Revisión de GOP |  | 2d | 2017-05-23 A | 2017-05-24 A | 78 | 100% |  |  |  |  |  |  |
| 80 | 1.2.2.1.7 | Levantamiento de observaciones |  | 2d | 2017-05-25 A | 2017-05-26 A | 79 | 100% |  |  |  |  |  |  |
| 81 | 1.2.2.1.8 | Validación Final de la Ficha Técnica de Proceso |  | 2d | 2017-05-29 A | 2017-05-30 A | 80 | 100% |  |  |  |  |  |  |
| 82 | 1.2.2.1.9 | Aprobación del documento |  | 2d | 2017-05-31 A | 2017-06-01 A | 81 | 100% |  |  |  |  |  |  |
| 83 | 1.2.2.2 | **2.2.2 Documento de Soporte** |  | 15d | 2017-08-22 | 2017-09-12 |  |  |  | 76d |  |  |  |  |
| 84 | 1.2.2.2.1 | **Procedimiento** |  | 15d | 2017-08-22 | 2017-09-12 |  |  |  | 76d |  |  |  |  |
| 85 | 1.2.2.2.1.1 | Elaboración del procedimiento |  | 7d | 2017-08-22 | 2017-08-31 |  |  |  | 76d | 0d | start no earlier than 2017-08-22 |  |  |
| 86 | 1.2.2.2.1.2 | Revisión del procedimiento (Usuario y GOP) |  | 3d | 2017-09-01 | 2017-09-05 | 85 |  |  | 76d | 0d |  |  |  |
| 87 | 1.2.2.2.1.3 | Levantamiento de observaciones |  | 2d | 2017-09-06 | 2017-09-07 | 86 |  |  | 76d | 0d |  |  |  |
| 88 | 1.2.2.2.1.4 | Validación de GOP |  | 2d | 2017-09-08 | 2017-09-11 | 87 |  |  | 76d | 0d |  |  |  |
| 89 | 1.2.2.2.1.5 | Aprobación del documento |  | 1d | 2017-09-12 | 2017-09-12 | 88 |  |  | 76d |  |  |  |  |

| ID | WBS | Task | Duration | Start | Finish | Predecessors | Complete | Remaining | Total slack | Free slack | Constraint | Resources | Work | Actual work |
| --- | --- | --- | --- | --- | --- | --- | --- | --- | --- | --- | --- | --- | --- | --- |
| 90 | 1.2.3 | **2.3 Analisis y Diseño de Sistema** | 132d | 2017-03-09 A | 2017-09-18 |  | 59% | 53.66d | 72d |  |  |  | 703.6h | 328h |
| 91 | 1.2.3.1 | **2.3.1 Definición Funcional (GA)** | 19d | 2017-06-02 A | 2017-06-28 A |  | 100% |  |  |  |  |  |  |  |
| 92 | 1.2.3.1.1 | Elaboración de la Definición Funcional | 10d | 2017-06-02 A | 2017-06-15 A |  | 100% |  |  |  |  |  |  |  |
| 93 | 1.2.3.1.2 | Revisión de GIN GOP y Usuario | 1d | 2017-06-16 A | 2017-06-16 A | 92 | 100% |  |  |  |  |  |  |  |
| 94 | 1.2.3.1.3 | Levantamiento de Observaciones de la DF | 4d | 2017-06-19 A | 2017-06-22 A | 93 | 100% |  |  |  |  |  |  |  |
| 95 | 1.2.3.1.4 | Validación Final DF (Usuario, GOP y GIN) | 3d | 2017-06-23 A | 2017-06-27 A | 94 | 100% |  |  |  | start no earlier than 2017-03-09 |  |  |  |
| 96 | 1.2.3.1.5 | Aprobación del Documento | 1d | 2017-06-28 A | 2017-06-28 A | 95 | 100% |  |  |  |  |  |  |  |
| 97 | 1.2.3.2 | **2.3.2 Definición Funcional (AMI)** | 16d | 2017-06-14 A | 2017-07-06 A |  | 100% |  |  |  |  |  |  |  |
| 98 | 1.2.3.2.1 | Elaboración de la Definición Funcional | 11d | 2017-06-14 A | 2017-06-28 A |  | 100% |  |  |  | start no earlier than 2017-06-14 |  |  |  |
| 99 | 1.2.3.2.2 | Revisión de GIN GOP y Usuario | 2d | 2017-06-29 A | 2017-06-30 A | 98 | 100% |  |  |  |  |  |  |  |
| 100 | 1.2.3.2.3 | Levantamiento de Observaciones de la DF | 2d | 2017-07-03 A | 2017-07-04 A | 99 | 100% |  |  |  |  |  |  |  |
| 101 | 1.2.3.2.4 | Validación Final DF (Usuario, GOP y GIN) | 1d | 2017-07-05 A | 2017-07-05 A | 100 | 100% |  |  |  | finish no earlier than 2017-06-28 |  |  |  |
| 102 | 1.2.3.2.5 | Aprobación del Documento | 1d | 2017-07-06 A | 2017-07-06 A | 101 | 100% |  |  |  |  |  |  |  |
| 103 | 1.2.3.3 | **2.3.3 Definición Funcional (Exp Virtual)** | 23d | 2017-07-07 A | 2017-08-09 A |  | 100% |  |  |  |  |  | 184h | 184h |
| 104 | 1.2.3.3.1 | Elaboración de la Definición Funcional | 9d | 2017-07-07 A | 2017-07-19 A | 102 | 100% |  |  |  |  | Luis Leiva | 72h | 72h |
| 105 | 1.2.3.3.2 | Revisión de GIN, GOP y Usuario | 2d | 2017-07-20 A | 2017-07-21 A | 104 | 100% |  |  |  |  | Luis Leiva; Marjorie Gil [50%]; Wilson R [50%] | 32h | 32h |
| 106 | 1.2.3.3.3 | Levantamiento de Observaciones de la DF | 2d | 2017-07-24 A | 2017-07-25 A | 105 | 100% |  |  |  |  | Luis Leiva | 16h | 16h |
| 107 | 1.2.3.3.4 | Validación Final DF (Usuario, GOP y GIN) | 2d | 2017-08-02 A | 2017-08-03 A | 106 | 100% |  |  |  | start no earlier than 2017-08-02 | Luis Leiva; Marjorie Gil [50%]; Usuario; Wilson R [50%] | 48h | 48h |
| 108 | 1.2.3.3.5 | Aprobación del Documento | 4d | 2017-08-04 A | 2017-08-09 A | 107 | 100% |  |  |  | finish no earlier than 2017-08-09 | América B [50%] | 16h | 16h |
| 109 | 1.2.3.4 | **2.3.4 Documento Técnico Exp Virtual** | 132d | 2017-03-09 A | 2017-09-18 |  | 47% | 69.47d | 72d |  |  |  | 267.6h | 144h |
| 110 | 1.2.3.4.1 | Elaboración de la DT | 25d | 2017-07-26 A | 2017-08-29 |  | 72% | 7d | 0d |  | start no earlier than 2017-07-26 | Luis Leiva | 200h | 144h |
| 111 | 1.2.3.4.2 | Revisión de GIN (Arquitectura /Modelo de Datos) | 3d | 2017-08-31 | 2017-09-04 | 110 |  |  | 0d |  |  | Edgar Marquez | 24h |  |
| 112 | 1.2.3.4.3 | Levantamiento de Observaciones | 3d | 2017-03-09 A | 2017-09-07 | 111 |  | 3d | 72d | 0d |  |  |  |  |
| 113 | 1.2.3.4.4 | Validación Final | 4d | 2017-09-08 | 2017-09-13 | 112 |  |  | 72d | 0d |  | Edgar Marquez [50%]; Wilson R [50%] | 24h |  |
| 114 | 1.2.3.4.5 | Aprobación del documento | 3d | 2017-09-14 | 2017-09-18 | 113 |  |  | 72d |  |  | Edgar Marquez [50%]; Wilson R [15%]; Celis [50%] | 19.6h |  |

| ID | WBS | Task | Duration | Start | Finish | Predecessors | Complete | Remaining | Total slack | Free slack | Constraint | Resources | Work | Actual work |
| --- | --- | --- | --- | --- | --- | --- | --- | --- | --- | --- | --- | --- | --- | --- |
| 115 | 1.2.3.5 | **2.3.5 Documento Técnico SGD** | 30d | 2017-08-07 | 2017-09-18 |  |  |  | 72d |  |  |  | 252h |  |
| 116 | 1.2.3.5.1 | Elaboración de la DT | 16d | 2017-08-07 | 2017-08-28 |  |  |  | 72d | 0d | start no earlier than 2017-08-07 | Luis Leiva | 128h |  |
| 117 | 1.2.3.5.2 | Revisión de GIN (Arquitectura /Modelo de Datos) | 3d | 2017-08-29 | 2017-09-01 | 116 |  |  | 72d | 0d |  | Celis; Edgar Marquez; Wilson R [50%] | 60h |  |
| 118 | 1.2.3.5.3 | Levantamiento de Observaciones | 3d | 2017-09-04 | 2017-09-06 | 117 |  |  | 72d | 0d |  | Luis Leiva [50%] | 12h |  |
| 119 | 1.2.3.5.4 | Revisión del Resposable del SGD | 3d | 2017-09-07 | 2017-09-11 | 118 |  |  | 72d | 0d |  |  |  |  |
| 120 | 1.2.3.5.5 | Validación Final | 4d | 2017-09-12 | 2017-09-15 | 119 |  |  | 72d | 0d |  | Celis [50%]; Edgar Marquez [50%]; Wilson R [50%] | 40h |  |
| 121 | 1.2.3.5.6 | Aprobación del documento | 1d | 2017-09-18 | 2017-09-18 | 120 |  |  | 72d |  |  | Edgar Marquez [50%]; Luis Leiva [50%]; Wilson R [50%] | 12h |  |
| 122 | 1.2.4 | **2.4 Construcción** | 167d | 2017-03-09 A | 2017-11-07 |  | 28% | 119.49d | 37d |  |  |  | 1762h | 505.6h |
| 123 | 1.2.4.1 | **2.4.1 Expediente Coactivo Virtual** | 83d | 2017-07-10 A | 2017-11-06 |  | 33% | 55.89d | 38d |  |  |  | 1378h | 385.6h |
| 124 | 1.2.4.1.1 | **2.4.1.1 Iteración 1 - Generación de archivos PDF** | 63d | 2017-07-10 A | 2017-10-06 |  | 49% | 31.86d | 58d |  |  |  | 976h | 385.6h |
| 125 | 1.2.4.1.1.1 | **A. Desarrollo** | 57d | 2017-07-10 A | 2017-09-28 |  | 56% | 25.35d | 38d |  |  |  | 904h | 385.6h |
| 126 | 1.2.4.1.1.1.1 | Generación de archivos PDF | 29d | 2017-07-10 A | 2017-08-18 |  | 80% | 5.8d | 38d | 0d | start no earlier than 2017-07-10 | César A | 232h | 185.6h |
| 127 | 1.2.4.1.1.1.2 | **Cortado de archivos PDF** | 28d | 2017-07-10 A | 2017-08-17 |  | 86% | 4d | 37d |  |  | Fernando B | 448h | 200h |
| 128 | 1.2.4.1.1.1.2.1 | DLL que realiza el corte del PDF | 16d | 2017-07-10 A | 2017-08-01 A |  | 100% |  |  |  |  | Fernando B | 128h | 128h |
| 129 | 1.2.4.1.1.1.2.2 | Servicio windows y web para la ejecución automática | 8d | 2017-08-02 A | 2017-08-11 A | 128 | 100% |  |  |  |  | Fernando B | 64h | 64h |
| 130 | 1.2.4.1.1.1.2.3 | Revisión de arquitectura | 2d | 2017-08-14 | 2017-08-15 | 129 |  |  | 37d | 0d |  | Ronald Raico | 16h |  |
| 131 | 1.2.4.1.1.1.2.4 | Subsanación de observaciones | 2d | 2017-08-16 | 2017-08-17 | 130 |  |  | 37d | 0d |  | Fernando B | 16h |  |
| 132 | 1.2.4.1.1.1.3 | Generación de archivo PDF en RS | 2d | 2017-08-21 | 2017-08-22 | 126 |  |  | 38d | 0d | start no earlier than 2017-08-14 | César A | 16h |  |
| 133 | 1.2.4.1.1.1.4 | Generación de archivo PDF en Copia | 1d | 2017-08-23 | 2017-08-23 | 132 |  |  | 38d | 0d |  | César A | 8h |  |
| 134 | 1.2.4.1.1.1.5 | Generación de archivo PDF en CIR | 1d | 2017-08-24 | 2017-08-24 | 133 |  |  | 38d | 0d |  | César A | 8h |  |
| 135 | 1.2.4.1.1.1.6 | Generación de archivo PDF en REC Transito | 1d | 2017-08-25 | 2017-08-25 | 134 |  |  | 38d | 0d |  | César A | 8h |  |
| 136 | 1.2.4.1.1.1.7 | Generación de archivo PDF en REC Multas Administrativas | 1d | 2017-08-28 | 2017-08-28 | 135 |  |  | 38d | 0d |  | César A | 8h |  |
| 137 | 1.2.4.1.1.1.8 | Generación de archivo PDF en RMC - módulo MC | 8d | 2017-08-29 | 2017-09-08 | 136 |  |  | 38d | 0d |  | César A | 64h |  |
| 138 | 1.2.4.1.1.1.9 | Generación de archivo PDF en RIEF - módulo MC | 3d | 2017-09-11 | 2017-09-13 | 137 |  |  | 38d | 0d |  | César A | 24h |  |
| 139 | 1.2.4.1.1.1.10 | Generación de archivo PDF en Nulidad - módulo MC | 3d | 2017-09-14 | 2017-09-18 | 138 |  |  | 38d | 0d |  | César A | 24h |  |
| 140 | 1.2.4.1.1.1.11 | Generación de archivo PDF en Esquela de Entrega - módulo Depósito | 5d | 2017-09-19 | 2017-09-25 | 139 |  |  | 38d | 0d |  | César A | 40h |  |
| 141 | 1.2.4.1.1.1.12 | Generación de archivo PDF en Acta de Secuestro Conservativo - módulo Depósito | 3d | 2017-09-26 | 2017-09-28 | 140 |  |  | 38d | 0d |  | César A | 24h |  |

| ID | WBS | Task | Duration | Start | Finish | Predecessors | Complete | Remaining | Total slack | Free slack | Constraint | Resources | Work | Actual work |
| --- | --- | --- | --- | --- | --- | --- | --- | --- | --- | --- | --- | --- | --- | --- |
| 142 | 1.2.4.1.1.2 | **B. Pruebas** | 6d | 2017-09-29 | 2017-10-06 |  |  |  | 38d |  |  |  | 72h |  |
| 143 | 1.2.4.1.1.2.1 | Documentación para el pase | 2d | 2017-09-29 | 2017-10-02 | 141 |  |  | 38d | 0d |  | César A | 16h |  |
| 144 | 1.2.4.1.1.2.2 | Envío y Revisión por AF Calidad (Rev 1) | 1d | 2017-10-03 | 2017-10-03 | 143 |  |  | 38d | 0d |  | AF Calidad | 8h |  |
| 145 | 1.2.4.1.1.2.3 | Levantamiento de Observaciones | 1d | 2017-10-04 | 2017-10-04 | 144 |  |  | 38d | 0d |  | César A | 8h |  |
| 146 | 1.2.4.1.1.2.4 | Pruebas con el equipo AE | 0.3d | 2017-10-05 | 2017-10-05 | 145 |  |  | 38d | 0d |  | César A; Luis Leiva; Wilson R [50%] | 6h |  |
| 147 | 1.2.4.1.1.2.5 | Pruebas de Aceptación (usuario) | 1.7d | 2017-10-05 | 2017-10-06 | 146 |  |  | 38d | 0d |  | César A; Luis Leiva; Wilson R [50%] | 34h |  |
| 148 | 1.2.4.1.1.3 | C. Pase a producción | 0.5d | 2017-09-06 | 2017-09-06 |  |  |  | 76.5d | 0.5d | start no earlier than 2017-09-06 |  |  |  |
| 149 | 1.2.4.1.1.4 | D. Seguimiento | 4d | 2017-09-07 | 2017-09-12 | 148 |  |  | 76d |  | start no earlier than 2017-09-07 |  |  |  |
| 150 | 1.2.4.1.2 | **2.4.1.2 Iteración 2** | 55d | 2017-08-18 | 2017-11-06 |  |  |  | 37d |  |  |  | 402h |  |
| 151 | 1.2.4.1.2.1 | **A. Desarrollo** | 45d | 2017-08-18 | 2017-10-20 |  |  |  | 37d |  |  |  | 312h |  |
| 152 | 1.2.4.1.2.1.1 | Visualizar documentos digitales del Expediente Coactivo Virtual | 14d | 2017-08-18 | 2017-09-07 | 131 |  |  | 37d | 0d |  | Fernando B | 112h |  |
| 153 | 1.2.4.1.2.1.2 | Solicitudes de Impresión de Expediente Coactivo | 10d | 2017-09-08 | 2017-09-21 | 152 |  |  | 64d | 0d |  | Fernando B | 80h |  |
| 154 | 1.2.4.1.2.1.3 | Ingresar documentos digitales manuales al Expediente Coactivo Virtual | 5d | 2017-09-22 | 2017-09-28 | 153 |  |  | 64d |  |  | Fernando B | 40h |  |
| 155 | 1.2.4.1.2.1.4 | Implementación de cuatro (4) Reportes | 8d | 2017-10-09 | 2017-10-18 | 147 |  |  | 38d | 0d |  | César A | 64h |  |
| 156 | 1.2.4.1.2.1.5 | Revisión en desarrollo | 2d | 2017-10-19 | 2017-10-20 | 155 |  |  | 38d | 0d |  | Edgar Marquez | 16h |  |
| 157 | 1.2.4.1.2.2 | **B. Pruebas** | 5.5d | 2017-10-23 | 2017-10-30 |  |  |  | 38d |  |  |  | 90h |  |
| 158 | 1.2.4.1.2.2.1 | Documentación para el pase | 1d | 2017-10-23 | 2017-10-23 | 156 |  |  | 38d | 0d |  | Fernando B | 8h |  |
| 159 | 1.2.4.1.2.2.2 | Envío y Revisión por AF Calidad (Rev 1) | 2d | 2017-10-24 | 2017-10-25 | 158 |  |  | 38d | 0d |  | AF Calidad | 16h |  |
| 160 | 1.2.4.1.2.2.3 | Levantamiento de Observaciones | 1d | 2017-10-26 | 2017-10-26 | 159 |  |  | 38d | 0d |  | César A; Fernando B | 16h |  |
| 161 | 1.2.4.1.2.2.4 | Pruebas con el equipo AE | 0.5d | 2017-10-27 | 2017-10-27 | 160 |  |  | 38d | 0d |  | César A; Fernando B; Luis Leiva; Wilson R [50%] | 14h |  |
| 162 | 1.2.4.1.2.2.5 | Pruebas de Aceptación (usuario) | 1d | 2017-10-27 | 2017-10-30 | 161 |  |  | 38d | 0d |  | César A; Fernando B; Luis Leiva; Usuario; Wilson R [50%] | 36h |  |
| 163 | 1.2.4.1.2.3 | C. Pase a producción | 0.5d | 2017-10-30 | 2017-10-30 | 162 |  |  | 38d | 0d |  |  |  |  |
| 164 | 1.2.4.1.2.4 | D. Seguimiento | 4d | 2017-10-31 | 2017-11-06 | 163 |  |  | 38d |  |  |  |  |  |
| 165 | 1.2.4.2 | **2.4.2 SGD - Atención de Solicitudes** | 167d | 2017-03-09 A | 2017-11-07 |  | 21% | 132.3d | 37d |  |  |  | 384h | 120h |
| 166 | 1.2.4.2.1 | **Iteración 1** | 16.5d | 2017-06-19 A | 2017-07-12 A |  | 100% |  |  |  |  |  | 120h | 120h |
| 167 | 1.2.4.2.1.1 | **A. Desarrollo** | 5d | 2017-06-19 A | 2017-06-23 A |  | 100% |  |  |  |  |  | 120h | 120h |
| 168 | 1.2.4.2.1.1.1 | Implementación de código de barras en el cargo de recepción | 5d | 2017-06-19 A | 2017-06-23 A |  | 100% |  |  |  | start no earlier than 2017-06-19 | César A; Fernando B; Luis Leiva | 120h | 120h |

| ID | WBS | Task | Type | Duration | Start | Finish | Predecessors | Complete | Total slack | Free slack | Resources | Work |
| --- | --- | --- | --- | --- | --- | --- | --- | --- | --- | --- | --- | --- |
| 169 | 1.2.4.2.1.2 | **B. Pruebas** |  | 8d | 2017-06-26 A | 2017-07-06 A |  | 100% |  |  |  |  |
| 170 | 1.2.4.2.1.2.1 | Documentación para el pase |  | 2d | 2017-06-26 A | 2017-06-27 A | 168 | 100% |  |  |  |  |
| 171 | 1.2.4.2.1.2.2 | Envío y Revisión por AF Calidad (Rev 1) |  | 1d | 2017-06-28 A | 2017-06-28 A | 170 | 100% |  |  |  |  |
| 172 | 1.2.4.2.1.2.3 | Levantamiento de Observaciones |  | 2d | 2017-06-30 A | 2017-07-03 A | 171 | 100% |  |  |  |  |
| 173 | 1.2.4.2.1.2.4 | Envío y Revisión por AF Calidad (Rev 2) |  | 2d | 2017-07-04 A | 2017-07-05 A | 172 | 100% |  |  |  |  |
| 174 | 1.2.4.2.1.2.5 | Pruebas con el equipo AE |  | 0.5d | 2017-07-06 A | 2017-07-06 A | 173 | 100% |  |  |  |  |
| 175 | 1.2.4.2.1.2.6 | Pruebas de Aceptación (usuario) |  | 0.5d | 2017-07-06 A | 2017-07-06 A | 174 | 100% |  |  |  |  |
| 176 | 1.2.4.2.1.3 | C. Pase a Producción |  | 0.5d | 2017-07-07 A | 2017-07-07 A | 175 | 100% |  |  |  |  |
| 177 | 1.2.4.2.1.4 | D. Seguimiento |  | 3d | 2017-07-07 A | 2017-07-12 A | 176 | 100% |  |  |  |  |
| 178 | 1.2.4.2.2 | **Iteración 2** |  | 42d | 2017-09-08 | 2017-11-07 |  |  | 0d |  |  | 264h |
| 179 | 1.2.4.2.2.1 | **A. Desarrollo** |  | 32d | 2017-09-08 | 2017-10-23 |  |  | 0d |  |  | 264h |
| 180 | 1.2.4.2.2.1.1 | Atención: Solicitar firmantes en proyecto respuesta |  | 8d | 2017-09-08 | 2017-09-19 | 152 |  | 37d | 0d | Fernando B | 64h |
| 181 | 1.2.4.2.2.1.2 | Atención: Firma mecanizada en documento respuesta |  | 2d | 2017-09-20 | 2017-09-21 | 180 |  | 37d | 0d | Fernando B | 16h |
| 182 | 1.2.4.2.2.1.3 | Atención: Selecccionar efectos en proyecto respuesta |  | 5d | 2017-09-22 | 2017-09-28 | 181 |  | 37d | 0d | Fernando B | 40h |
| 183 | 1.2.4.2.2.1.4 | Atención: Generar automáticamente el documento respuesta |  | 3d | 2017-09-29 | 2017-10-03 | 182 |  | 37d | 0d | Fernando B | 24h |
| 184 | 1.2.4.2.2.1.5 | Asignación: Balanceo de Carga equitativo para los resolutores | manual | 1d | 2017-09-08 | 2017-09-08 |  |  |  |  | Fernando B | 8h |
| 185 | 1.2.4.2.2.1.6 | Reporte Unificado No Tributario |  | 5d | 2017-10-04 | 2017-10-10 | 183 |  | 37d | 0d | Fernando B | 40h |
| 186 | 1.2.4.2.2.1.7 | Traslado del documento digitalizado al directorio de ubicación final |  | 5d | 2017-10-11 | 2017-10-17 | 185 |  | 37d | 0d | Fernando B | 40h |
| 187 | 1.2.4.2.2.1.8 | Visualizar el documento digitalizado |  | 3d | 2017-10-18 | 2017-10-20 | 186 |  | 37d | 0d | Fernando B | 24h |
| 188 | 1.2.4.2.2.1.9 | Revisión en Desarrollo |  | 1d | 2017-10-23 | 2017-10-23 | 187 |  | 37d | 0d | Edgar Marquez | 8h |
| 189 | 1.2.4.2.2.2 | **B. Pruebas** |  | 5.5d | 2017-10-24 | 2017-10-31 |  |  | 37d |  |  |  |
| 190 | 1.2.4.2.2.2.1 | Documentación para el pase |  | 1d | 2017-10-24 | 2017-10-24 | 188 |  | 37d | 0d |  |  |
| 191 | 1.2.4.2.2.2.2 | Envío y Revisión por AF Calidad (Rev 1) |  | 2d | 2017-10-25 | 2017-10-26 | 190 |  | 37d | 0d |  |  |
| 192 | 1.2.4.2.2.2.3 | Levantamiento de Observaciones |  | 1d | 2017-10-27 | 2017-10-27 | 191 |  | 37d | 0d |  |  |
| 193 | 1.2.4.2.2.2.4 | Pruebas con el equipo AE |  | 0.5d | 2017-10-30 | 2017-10-30 | 192 |  | 37d | 0d |  |  |
| 194 | 1.2.4.2.2.2.5 | Pruebas de Aceptación (usuario) |  | 1d | 2017-10-30 | 2017-10-31 | 193 |  | 37d | 0d |  |  |
| 195 | 1.2.4.2.2.3 | C. Pase a Producción |  | 0.5d | 2017-10-31 | 2017-10-31 | 194 |  | 37d | 0d |  |  |
| 196 | 1.2.4.2.2.4 | D. Seguimiento |  | 4d | 2017-11-02 | 2017-11-07 | 195 |  | 37d |  |  |  |

| ID | WBS | Task | Type | Duration | Start | Finish | Predecessors | Total slack | Free slack | Constraint |
| --- | --- | --- | --- | --- | --- | --- | --- | --- | --- | --- |
| 197 | 1.2.4.2.3 | **Iteración 3** |  | 19.9d | 2017-03-09 | 2017-04-05 |  | 184.1d |  |  |
| 198 | 1.2.4.2.3.1 | **A. Desarrollo** |  | 13d | 2017-03-09 | 2017-03-27 |  | 184.1d |  |  |
| 199 | 1.2.4.2.3.1.1 | Implementación de cuatro (4) Reportes |  | 12d | 2017-03-09 | 2017-03-24 |  | 184.1d | 0d |  |
| 200 | 1.2.4.2.3.1.2 | Revisión en Desarrollo |  | 1d | 2017-03-27 | 2017-03-27 | 199 | 184.1d | 0d |  |
| 201 | 1.2.4.2.3.2 | **B. Pruebas** |  | 2.6d | 2017-03-28 | 2017-03-30 |  | 184.1d |  |  |
| 202 | 1.2.4.2.3.2.1 | Documentación para el pase |  | 0.5d | 2017-03-28 | 2017-03-28 | 200 | 184.1d | 0d |  |
| 203 | 1.2.4.2.3.2.2 | Envío y Revisión por AF Calidad (Rev 1) |  | 1d | 2017-03-28 | 2017-03-29 | 202 | 184.1d | 0d |  |
| 204 | 1.2.4.2.3.2.3 | Levantamiento de Observaciones |  | 0.5d | 2017-03-29 | 2017-03-29 | 203 | 184.1d | 0d |  |
| 205 | 1.2.4.2.3.2.4 | Pruebas con el equipo AE |  | 0.3d | 2017-03-30 | 2017-03-30 | 204 | 184.1d | 0d |  |
| 206 | 1.2.4.2.3.2.5 | Pruebas de Aceptación (usuario) |  | 0.3d | 2017-03-30 | 2017-03-30 | 205 | 184.1d | 0d |  |
| 207 | 1.2.4.2.3.3 | C. Pase a Producción |  | 0.3d | 2017-03-30 | 2017-03-30 | 206 | 184.1d | 0d |  |
| 208 | 1.2.4.2.3.4 | D. Seguimiento |  | 4d | 2017-03-30 | 2017-04-05 | 207 | 184.1d |  |  |
| 209 | 1.2.5 | **2.5 Actividades complementarias** |  | 203d | 2017-03-09 | 2017-12-29 |  | 0d |  |  |
| 210 | 1.2.5.1 | **2.5.2 Capacitación a Usuarios** |  | 19d | 2017-12-01 | 2017-12-29 |  | 1d |  |  |
| 211 | 1.2.5.1.1 | Expediente Virtual |  | 3d | 2017-12-01 | 2017-12-05 |  | 17d |  | start no earlier than 2017-12-01 |
| 212 | 1.2.5.1.2 | SGD - Atención |  | 3d | 2017-12-27 | 2017-12-29 |  | 1d |  | start no earlier than 2017-12-27 |
| 213 | 1.2.5.2 | **2.5.3 Documentación (sistemas)** |  | 1d | 2017-03-09 | 2017-03-09 |  | 0d |  |  |
| 214 | 1.2.5.2.1 | **2.5.3.1 Manual de Usuario** |  | 1d | 2017-03-09 | 2017-03-09 |  | 0d |  |  |
| 215 | 1.2.5.2.1.1 | Elaboración del Manual de Usuario | manual | 1d | 2017-03-09 | 2017-03-09 |  |  |  |  |
| 216 | 1.2.5.2.1.2 | Revisión del usuario | manual | 1d | 2017-03-09 | 2017-03-09 |  |  |  |  |
| 217 | 1.2.5.2.1.3 | Levatamiento de observaciones | manual | 1d | 2017-03-09 | 2017-03-09 |  |  |  |  |
| 218 | 1.2.5.2.1.4 | Aprobación del Manual | manual | 1d | 2017-03-09 | 2017-03-09 |  |  |  |  |
| 219 | 1.2.5.3 | **2.5.4 Transferencia a Informática** |  | 4d | 2017-03-09 | 2017-03-14 |  | 200d |  |  |
| 220 | 1.2.5.3.1 | Elaborar documento de transferencia |  | 3d | 2017-03-09 | 2017-03-13 |  | 200d | 0d |  |
| 221 | 1.2.5.3.2 | Envío de documento formal |  | 1d | 2017-03-14 | 2017-03-14 | 220 | 200d |  |  |
